# CONSTRUCCION DE ACCESO VIAL PLANTA SEPARADORA DE LIQUIDOS GRAN CHACO

Schedule from MS Project, 2015-02-01 to 2015-08-20, status date 2012-04-01, 10 hours a day.
intel

## Calendars

- 24 horas: Mon-Sun 08:00-12:00, 14:00-20:00.

## Resources

| Resource |
| --- |
| Arado de discos |
| Bomba con manómetro |
| Camión Aguatero (cisterna) |
| Carreta perforadora |
| Compactador de Rodillo |
| Compesora 350 CFM |
| Compactador Manual |
| Cortadora de fierro |
| Dragalina p/lodo bentonítico |
| Equipo de pilotaje |
| Equipo para suelos |
| Equipo Topográfico |
| Gato hidráulico |
| Grúa de 34 Tn. |
| Grupo Generador 15 kva |
| Hormigonera |
| Inyectora |
| Motobomba de 3" |
| Motoniveladora |
| Motosoldadora |
| Pala Frontal |
| Retroexcavadora |
| Soldador electrico |
| Tractor Agrícola |
| Tractor D7 |
| Vibradora |
| Volqueta |

## Schedule

| ID | WBS | Task | Type | Duration | Start | Finish | Predecessors | Total slack | Free slack | Constraint |
| --- | --- | --- | --- | --- | --- | --- | --- | --- | --- | --- |
| 1 | 1 | ANTICIPO 20 % | milestone | 0d | 2015-02-01 | 2015-02-01 |  | 200d |  | start no earlier than 2015-02-01 |
| 2 | 2 | **MOVILIZACION Y DESMOVILIZACION** |  | 19d | 2015-02-01 | 2015-02-20 |  | 0d |  |  |
| 3 | 2.1 | INSTALACION DE FAENAS |  | 3d | 2015-02-01 | 2015-02-04 |  | 0d |  |  |
| 4 | 2.2 | LETRERO IDENTIFICATORIO DE OBRA DE 4*6M (SEGUN DISEÑO) |  | 2d | 2015-02-02 | 2015-02-04 | 3SS+1d | 197d |  |  |
| 5 | 2.3 | PLACA DE ENTREGA DE OBRA 40 X 60 S/ DISENO |  | 2d | 2015-02-01 | 2015-02-03 |  | 198d |  |  |
| 6 | 2.4 | MOVILIZACION Y DESMOVILIZACION DE EQUIPO |  | 5d | 2015-02-03 | 2015-02-08 | 3SS+2d | 193d |  |  |
| 7 | 2.5 | REPLANTEO Y CONTROL TOPOGRAFICO |  | 15d | 2015-02-05 | 2015-02-20 | 3SS+4d | 0d |  |  |
| 8 | 3 | **MOVIMIENTO DE SUELOS** |  | 52d | 2015-02-10 | 2015-04-03 |  | 0d |  |  |
| 9 | 3.1 | DESBROCE, DESBOSQUE, DESTRONQUE Y LIMPIEZA |  | 25d | 2015-02-10 | 2015-03-07 | 7SS+5d | 0d |  |  |
| 10 | 3.2 | EXCAVACION NO CLASIFICADA |  | 50d | 2015-02-12 | 2015-04-03 | 9SS+2d | 0d |  |  |
| 11 | 3.3 | TRANSPORTE DE MATERIAL DE EXCAVACION NO CLASIFICICADA D>300M |  | 45d | 2015-02-13 | 2015-03-30 | 10SS+1d | 143d |  |  |
| 12 | 4 | **MEJORAMIENTO DE SUBRASANTE** |  | 68d | 2015-02-14 | 2015-04-23 |  | 0d |  |  |
| 13 | 4.1 | PREPARACION DE TERRENO DE FUNDACION Y NIVELACION |  | 15d | 2015-02-14 | 2015-03-01 | 10SS+2d | 0d |  |  |
| 14 | 4.2 | EXCAVACION DE MATERIAL P/MEJORAMIENTO SUBRASANTE (SUELO CEMENTO) |  | 20d | 2015-02-19 | 2015-03-11 | 13SS+5d | 162d | 0d |  |
| 15 | 4.3 | TRANSPORTE DE MATERIAL P/MEJORAMIENTO SUBRASANTE (SUELO CEMENTO) D>300M |  | 15d | 2015-02-21 | 2015-03-08 | 14SS+2d | 165d |  |  |
| 16 | 4.4 | CONSTRUCCION DE BASE DE SUELO - CEMENTO |  | 35d | 2015-02-19 | 2015-03-26 | 13SS+5d | 0d |  |  |
| 17 | 4.5 | EXCAVACION DE MATERIAL P/SUELO MEJORADO (TERRAPLEN) |  | 25d | 2015-03-01 | 2015-03-26 | 16SS+10d | 0d |  |  |
| 18 | 4.6 | TRANSPORTE DE MATERIAL P/ SUELO MEJORADO (TERRAPLEN) D>300M |  | 30d | 2015-03-03 | 2015-04-02 | 17SS+2d | 140d |  |  |
| 19 | 4.7 | CONFORMACION DE TERRAPLEN |  | 48d | 2015-03-06 | 2015-04-23 | 17SS+5d | 0d |  |  |
| 20 | 4.8 | HITO 1 | milestone | 0d | 2015-04-02 | 2015-04-02 |  | 139.2d |  | finish no earlier than 2015-04-02 |
| 21 | 5 | **PAQUETE ESTRUCTURAL DEL PAVIMENTO RIGIDO** |  | 137.8d | 2015-02-14 | 2015-07-01 |  | 49.2d |  |  |
| 22 | 5.1 | PROVISION Y TRANSPORTE DE MATERIAL GRANULAR P/SUBBASE D>300 M |  | 35d | 2015-02-14 | 2015-03-21 | 3FS+10d | 152d |  |  |
| 23 | 5.2 | PROVISION Y CONFORMACION DE SUB BASE GRANULAR |  | 25d | 2015-04-23 | 2015-05-18 | 19 | 0d |  |  |
| 24 | 5.3 | IMPRIMACION BITUMINOSA SOBRE SUELO CEMENTO Y SUBBASE |  | 20d | 2015-04-28 | 2015-05-18 | 23SS+5d | 0d |  |  |
| 25 | 5.4 | PAVIMENTO DE HORMIGON ESP 25 CM, COLOCADO Y CURADO |  | 55d | 2015-05-03 | 2015-06-27 | 24SS+5d | 0d |  |  |
| 26 | 5.5 | PAVIMENTO DE HORMIGON ESP 25 CM, REFORZADO COLOCADO Y CURADO |  | 15d | 2015-06-02 | 2015-06-17 | 25SS+30d | 64d |  |  |
| 27 | 5.6 | CORTE Y SELLADO DE JUNTAS EN PAVIMENTO |  | 56d | 2015-05-04 | 2015-06-29 | 25SS+1d | 0d |  |  |
| 28 | 5.7 | TRATAMIENTO SUPERFICIAL DOBLE (BERMAS) |  | 25d | 2015-06-03 | 2015-06-28 | 27SS+30d | 53d |  |  |
| 29 | 5.8 | HITO 2 | milestone | 0d | 2015-07-01 | 2015-07-01 |  | 49.2d |  | finish no earlier than 2015-07-01 |

| ID | WBS | Task | Duration | Start | Finish | Predecessors | Total slack | Free slack |
| --- | --- | --- | --- | --- | --- | --- | --- | --- |
| 30 | 6 | **DEMOLICIONES** | 8d | 2015-04-15 | 2015-04-23 |  | 119d |  |
| 31 | 6.1 | DEMOLICION Y REMOCION DE ESTRUCTURAS DE HORMIGON EXISTENTES | 8d | 2015-04-15 | 2015-04-23 | 3FS+70d | 119d |  |
| 32 | 7 | **ALCANTARILLAS CAJON** | 64d | 2015-04-21 | 2015-06-24 |  | 8d |  |
| 33 | 7.1 | TRAZADO Y REPLANTEO DE ALCANTARILLAS DEL ACCESO VIAL | 4d | 2015-04-21 | 2015-04-25 | 7FS+60d | 8d | 0d |
| 34 | 7.2 | EXCAVACION CON MAQUINARIA PARA ALCANTARILLAS | 8d | 2015-04-25 | 2015-05-03 | 33 | 31d | 0d |
| 35 | 7.3 | PROV. MAT. GRANULAR,RELLENO Y COMPACTADO PARA ALCANTARILLAS CAJON | 12d | 2015-04-29 | 2015-05-11 | 34SS+4d | 31d | 0d |
| 36 | 7.4 | ALCANTARILLA CAJON TIPO 1 Y 2 DE HORMIGON ARMADO H-25 | 15d | 2015-05-11 | 2015-05-26 | 35 | 60d | 0d |
| 37 | 7.5 | ALCANTARILLA CAJON TIPO 3 DE HORMIGON ARMADO H-25 | 10d | 2015-05-26 | 2015-06-05 | 36 | 60d | 0d |
| 38 | 7.6 | CARPETA DE NIVELACION SOBRE LOSA MÍNIMO E = 5CM | 2d | 2015-05-28 | 2015-05-30 | 37SS+2d | 60d | 0d |
| 39 | 7.7 | CABEZAL DE HORMIGON CICLOPEO50% INC. BORDILLO | 12d | 2015-05-30 | 2015-06-11 | 38 | 70d |  |
| 40 | 7.8 | EMPEDRADO Y CARPETA DE NIVELACION MINIMO E=5CM | 8d | 2015-05-30 | 2015-06-07 | 38 | 60d | 0d |
| 41 | 7.9 | PROV. Y COLOCADO DE JUNTA DE CONSTRUCCIÓN INCLUYE SELLO | 8d | 2015-06-07 | 2015-06-15 | 40 | 60d | 0d |
| 42 | 7.10 | PROV. Y COLOCADO DE CANTONERAS ENTRE ALCANTARILLA Y PAVIMENTO | 11d | 2015-06-10 | 2015-06-21 | 41SS+3d | 60d |  |
| 43 | 7.11 | PROV Y COLOC. BARANDAS METALICAS TUBO F°G° | 35d | 2015-05-20 | 2015-06-24 | 33FS+25d | 42d | 0d |
| 44 | 8 | **CUNETAS** | 71d | 2015-05-10 | 2015-07-20 |  | 8d |  |
| 45 | 8.1 | TRAZADO Y REPLANTEO DE CUNETAS | 12d | 2015-05-10 | 2015-05-22 | 33FS+15d | 8d | 0d |
| 46 | 8.2 | EXCAVACION CON MAQUINARIA PARA CUNETAS | 20d | 2015-05-13 | 2015-06-02 | 45SS+3d | 79d |  |
| 47 | 8.3 | PROV. MAT. GRANULAR, RELLENO Y COMPACTADO DE CUNETAS | 20d | 2015-05-26 | 2015-06-15 | 35FS+15d | 31d | 0d |
| 48 | 8.4 | CUNETAS DE PIE DE TERRAPLEN DE HºSº | 35d | 2015-05-31 | 2015-07-05 | 47SS+5d | 31d | 0d |
| 49 | 8.5 | TAPAS DE HORMIGÓN ARMADO PARA SALVACUNETAS | 15d | 2015-07-05 | 2015-07-20 | 48 | 31d |  |
| 50 | 8.6 | PROV. Y COLOC. DE GEOTEXTIL PARA BASE DE CUNETAS | 35d | 2015-05-31 | 2015-07-05 | 48SS | 46d |  |
| 51 | 9 | **GAVIONES TIPO CAJON** | 21d | 2015-05-27 | 2015-06-17 |  | 8d |  |
| 52 | 9.1 | TRAZADO Y REPLANTEO DE CANALES | 12d | 2015-05-27 | 2015-06-08 | 45FS+5d | 8d | 0d |
| 53 | 9.2 | MOVIMIENTO DE TIERRA CON MAQUINARIA PARA GAVIONES | 12d | 2015-06-01 | 2015-06-13 | 52SS+5d | 64d | 0d |
| 54 | 9.3 | PROV. Y COLOCADO DE GAVIONES TIPO CAJON | 8d | 2015-06-09 | 2015-06-17 | 53SS+8d | 64d |  |
| 55 | 9.4 | EXCAVACION CON MAQUINARIA PARA GAVIONES | 2d | 2015-06-15 | 2015-06-17 | 53FS+2d | 64d |  |
| 56 | 9.5 | PROV. MAT. GRANULAR, RELLENO Y COMPACTADO PARA GAVIONES | 2d | 2015-06-15 | 2015-06-17 | 47 | 64d |  |

| ID | WBS | Task | Type | Duration | Start | Finish | Predecessors | Total slack | Free slack | Constraint |
| --- | --- | --- | --- | --- | --- | --- | --- | --- | --- | --- |
| 57 | 10 | **CANAL Y ALC.PARA CRUCE DE VIA FERREA** |  | 60d | 2015-06-13 | 2015-08-12 |  | 8d |  |  |
| 58 | 10.1 | TRAZADO Y REPLANTEO DE OBRAS PARA CRUCE DE VIA FERREA |  | 10d | 2015-06-13 | 2015-06-23 | 52FS+5d | 8d | 0d |  |
| 59 | 10.2 | EXCAVACION MANUAL TERRENO SEMIDURO 0-2 M |  | 12d | 2015-06-23 | 2015-07-05 | 58 | 8d | 0d |  |
| 60 | 10.3 | ALCANTARILLA DE HORMIGON ARMADO H-25 PARA CRUCE DE VIA FERREA |  | 15d | 2015-07-08 | 2015-07-23 | 61 | 8d | 0d |  |
| 61 | 10.4 | PROV. MAT. GRANULAR, RELLENO Y COMPACTADO PARA ALCANTARILLAS CAJON |  | 3d | 2015-07-05 | 2015-07-08 | 59 | 8d | 0d |  |
| 62 | 10.5 | MANTENIMIENTO DE CANAL RECEPTOR DE DRENAJE DEL ACCESO |  | 20d | 2015-07-23 | 2015-08-12 | 60 | 8d |  |  |
| 63 | 11 | **SENALIZACION Y SEGURIDAD VIAL** |  | 50d | 2015-06-29 | 2015-08-18 |  | 0d |  |  |
| 64 | 11.1 | PROV. E INST. DE SEÑALES VERTICALES PREVENTIVAS |  | 4d | 2015-06-29 | 2015-07-03 | 27 | 0d |  |  |
| 65 | 11.2 | PROV. E INST. DE SEÑALES VERTICALES REGLAMENTARIAS |  | 3d | 2015-07-03 | 2015-07-06 | 64 | 0d |  |  |
| 66 | 11.3 | PROV. E INST. DE SEÑALES VERTICALES INFORMATIVAS |  | 1d | 2015-07-06 | 2015-07-07 | 65 | 0d |  |  |
| 67 | 11.4 | PINTADO DE CALZADA LINEA CONTINUA BLANCA |  | 20d | 2015-07-07 | 2015-07-27 | 66 | 0d |  |  |
| 68 | 11.5 | PINTADO DE CALZADA LINEA SEGMENTADA BLANCA |  | 12d | 2015-07-27 | 2015-08-08 | 67 | 0d |  |  |
| 69 | 11.6 | TACHAS REFLECTIVAS DE BORDES (OJO DE GATO) |  | 7d | 2015-08-08 | 2015-08-15 | 68 | 0d |  |  |
| 70 | 11.7 | TACHAS REFLECTIVAS CENTRALES (OJO DE GATO) |  | 3d | 2015-08-15 | 2015-08-18 | 69 | 0d |  |  |
| 71 | 12 | **OBRAS COMPLEMENTARIAS** |  | 57d | 2015-06-24 | 2015-08-20 |  | 0d |  |  |
| 72 | 12.1 | LOSA DE PROTECCION DE DUCTOS DE GAS (YPFB TRANPORTE) |  | 15d | 2015-06-24 | 2015-07-09 | 43 | 42d |  |  |
| 73 | 12.2 | PROV. Y COLCADO DE SEMAFORO PARA CRUCES |  | 2d | 2015-08-18 | 2015-08-20 | 70 | 0d |  |  |
| 74 | 13 | **MEDIDAS DE MITIGACIÓN AMBIENTAL** |  | 197d | 2015-02-04 | 2015-08-20 |  | 0d |  |  |
| 75 | 13.1 | ESTUDIO DEL PLAN DE DESMONTE |  | 197d | 2015-02-04 | 2015-08-20 | 3 | 0d |  |  |
| 76 | 13.2 | LIQUIDACION DE PATENTES POR HA DE LA SUPERFICIE A DEMONTAR |  | 197d | 2015-02-04 | 2015-08-20 | 3 | 0d |  |  |
| 77 | 13.3 | MONITORES SOCIO AMBIENTAL |  | 197d | 2015-02-04 | 2015-08-20 | 3 | 0d |  |  |
| 78 | 13.4 | REVEGETACION Y CONTROL DE TALUDES |  | 197d | 2015-02-04 | 2015-08-20 | 3 | 0d |  |  |
| 79 | 13.5 | GESTION DE RESIDUOS SOLIDOS Y LIQUIDOS |  | 197d | 2015-02-04 | 2015-08-20 | 3 | 0d |  |  |
| 80 | 13.6 | HITO 3 | milestone | 0d | 2015-08-19 | 2015-08-19 |  | 0.2d |  | finish no earlier than 2015-08-19 |
