# CRNOGRMA ITEMS LORE

Schedule from MS Project, 2015-09-21 to 2016-04-01.

## Calendars

- Estándar: Mon-Fri 09:00-13:00, 15:00-19:00; Sat-Sun off. Exceptions (off unless hours are given): 2015-09-26 09:00-13:00, 15:00-19:00, 2016-02-13 09:00-13:00, 15:00-19:00.

## Schedule

| ID | WBS | Task | Duration | Start | Finish | Total slack | Constraint |
| --- | --- | --- | --- | --- | --- | --- | --- |
| 1 | 1 | **PROYECTO** | 142d | 2015-09-21 | 2016-04-01 | 0d |  |
| 2 | 1.1 | **TRABAJO PRELIMINAR** | 16d | 2015-09-21 | 2015-10-09 |  |  |
| 3 | 1.1.1 | REPLANTEO Y CONTROL TOPOGRAFICO | 15d | 2015-09-21 | 2015-10-08 | 1d |  |
| 4 | 1.2 | **MOVIMIENTO DE SUELOS** | 137d | 2015-09-26 | 2016-04-01 | 0d |  |
| 5 | 1.2.1 | DESBROCE, DESBOSQUE, DESTRONQUE Y LIMPIEZA | 28d | 2015-09-26 | 2016-04-01 | 0d | start no earlier than 2015-09-26 |
| 6 | 1.2.2 | EXCAVACION NO CLASIFICADA | 50d | 2015-09-29 | 2015-12-07 | 85d | start no earlier than 2015-09-29 |
| 7 | 1.2.3 | TRANSPORTE DE MATERIAL DE EXCAVACION NO CLASIFICICADA D>300M | 68d | 2015-10-01 | 2016-01-04 | 65d | start no earlier than 2015-10-01 |
| 8 | 1.3 | **MEJORAMIENTO DE SUBRASANTE** | 66d | 2015-10-01 | 2015-12-31 | 67d |  |
| 9 | 1.3.1 | PREPARACION DE TERRENO DE FUNDACION Y NIVELACION | 15d | 2015-10-01 | 2015-10-21 | 118d | start no earlier than 2015-10-01 |
| 10 | 1.3.2 | EXCAVACION DE MATERIAL P/MEJORAMIENTO SUBRASANTE (SUELO CEMENTO) | 20d | 2015-10-07 | 2015-11-03 | 109d | start no earlier than 2015-10-07 |
| 11 | 1.3.3 | TRANSPORTE DE MATERIAL P/MEJORAMIENTO SUBRASANTE (SUELO CEMENTO) D>300M | 15d | 2015-10-09 | 2015-10-29 | 112d | start no earlier than 2015-10-09 |
| 12 | 1.3.4 | CONSTRUCCION DE BASE DE SUELO - CEMENTO | 35d | 2015-10-07 | 2015-11-24 | 94d | start no earlier than 2015-10-07 |
| 13 | 1.3.5 | EXCAVACION DE MATERIAL P/SUELO MEJORADO (TERRAPLEN) | 25d | 2015-10-21 | 2015-11-24 | 94d | start no earlier than 2015-10-21 |
| 14 | 1.3.6 | TRANSPORTE DE MATERIAL P/ SUELO MEJORADO (TERRAPLEN) D>300M | 30d | 2015-10-23 | 2015-12-03 | 87d | start no earlier than 2015-10-23 |
| 15 | 1.3.7 | CONFORMACION DE TERRAPLEN | 48d | 2015-10-27 | 2015-12-31 | 67d | start no earlier than 2015-10-27 |
| 16 | 1.4 | **PAQUETE ESTRUCTURAL DEL PAVIMENTO RIGIDO** | 131d | 2015-10-01 | 2016-03-30 | 2d |  |
| 17 | 1.4.1 | PROVISION Y TRANSPORTE DE MATERIAL GRANULAR P/SUBBASE D>300 M | 35d | 2015-10-01 | 2015-11-18 | 98d | start no earlier than 2015-10-01 |
| 18 | 1.4.2 | PROVISION Y CONFORMACION DE SUB BASE GRANULAR | 25d | 2015-12-31 | 2016-02-03 | 43d | start no earlier than 2015-12-31 |
| 19 | 1.4.3 | IMPRIMACION BITUMINOSA SOBRE SUELO CEMENTO Y SUBBASE | 25d | 2016-01-06 | 2016-02-09 | 39d | start no earlier than 2016-01-06 |
| 20 | 1.4.4 | PAVIMENTO DE HORMIGON ESP 25 CM, COLOCADO Y CURADO | 55d | 2016-01-13 | 2016-03-28 | 4d | start no earlier than 2016-01-13 |
| 21 | 1.4.5 | PAVIMENTO DE HORMIGON ESP 25 CM, REFORZADO COLOCADO Y CURADO | 15d | 2016-02-12 | 2016-03-02 | 22d | start no earlier than 2016-02-12 |
| 22 | 1.4.6 | CORTE Y SELLADO DE JUNTAS EN PAVIMENTO | 56d | 2016-01-14 | 2016-03-30 | 2d | start no earlier than 2016-01-14 |
| 23 | 1.4.7 | TRATAMIENTO SUPERFICIAL DOBLE (BERMAS) | 25d | 2016-02-13 | 2016-03-17 | 11d | start no earlier than 2016-02-13 |
